# 殡葬周期表

Schedule from MS Project, 2015-04-09 to 2015-05-28, A marks actual dates.

## Calendars

- Standard: Mon-Fri 08:00-12:00, 13:00-17:00; Sat-Sun off. Exceptions (off unless hours are given): 2015-04-11 to 2015-04-12 08:00-12:00, 13:00-17:00, 2015-04-19 08:00-12:00, 13:00-17:00, 2015-04-25 08:00-12:00, 13:00-17:00, 2015-05-03 08:00-12:00, 13:00-17:00, 2015-05-10 08:00-12:00, 13:00-17:00.

## Resources

| Resource |
| --- |
| 柳哲进 |
| 尹升日 |
| 金学敏 |
| 金玉哲 |
| 李哲 |
| 张忠昱 |
| 刘俊宏 |
| 史瑞丰 |
| 肖娜娜 |
| 崔明日 |
| 李志远 |

## Schedule

| ID | WBS | Task | Type | Duration | Start | Finish | Predecessors | Complete | Remaining | Baseline start | Baseline finish | Baseline duration | Baseline 1 start | Baseline 1 finish | Total slack | Constraint | Resources | Work | Actual work |
| --- | --- | --- | --- | --- | --- | --- | --- | --- | --- | --- | --- | --- | --- | --- | --- | --- | --- | --- | --- |
| 1 | 1 | **原型图确定及制作** |  | 8d | 2015-04-09 A | 2015-04-16 |  | 92% | 0.67d | 2015-04-09 | 2015-04-16 | 8d | 2015-04-09 | 2015-04-16 |  |  | 尹升日; 张忠昱 | 208h | 160h |
| 2 | 1.1 | 访客 | manual | 1d | 2015-04-09 A | 2015-04-09 A |  | 100% |  | 2015-04-09 | 2015-04-09 | 1d | 2015-04-09 | 2015-04-09 |  |  | 尹升日; 张忠昱 | 16h | 16h |
| 3 | 1.2 | 旧客户 | manual | 1d | 2015-04-10 A | 2015-04-10 A | 2 | 100% |  | 2015-04-10 | 2015-04-10 | 1d | 2015-04-10 | 2015-04-10 |  |  | 尹升日; 张忠昱 | 16h | 16h |
| 4 | 1.3 | 代销商 | manual | 1d | 2015-04-11 A | 2015-04-11 A | 3 | 100% |  | 2015-04-11 | 2015-04-11 | 1d | 2015-04-11 | 2015-04-11 |  | start no earlier than 2015-04-11 | 尹升日; 张忠昱 | 16h | 16h |
| 5 | 1.4 | 员工 | manual | 1d | 2015-04-13 A | 2015-04-13 A |  | 100% |  | 2015-04-13 | 2015-04-13 | 1d | 2015-04-13 | 2015-04-13 |  | start no earlier than 2015-04-13 | 尹升日; 张忠昱 | 16h | 16h |
| 6 | 1.5 | 领导 | manual | 1d | 2015-04-14 A | 2015-04-14 A | 5 | 100% |  | 2015-04-14 | 2015-04-14 | 1d | 2015-04-14 | 2015-04-14 |  |  | 尹升日; 张忠昱 | 16h | 16h |
| 7 | 1.6 | 其他 | manual | 1d | 2015-04-16 A | 2015-04-16 | 6 | 50% | 0.5d | 2015-04-16 | 2015-04-16 | 1d | 2015-04-16 | 2015-04-16 |  |  | 尹升日; 张忠昱 | 16h | 8h |
| 8 | 2 | **Android开发** |  | 34d | 2015-04-10 A | 2015-05-19 |  | 89% | 3.86d | 2015-04-10 | 2015-05-19 | 34d | 2015-04-10 | 2015-05-19 |  |  | 李哲; 金学敏; 金玉哲 | 1824h | 1266.18h |
| 9 | 2.1 | **Demo开发** |  | 17d | 2015-04-10 A | 2015-04-28 |  | 99% | 0d | 2015-04-10 | 2015-05-09 | 26d | 2015-04-10 | 2015-04-28 | 0d |  | 李哲; 金学敏; 金玉哲 | 976h | 784h |
| 10 | 2.1.1 | **访客** |  | 5d | 2015-04-10 A | 2015-04-14 |  | 99% | 0d | 2015-04-10 | 2015-04-14 | 5d | 2015-04-10 | 2015-04-14 | 0d |  | 李哲; 金学敏; 金玉哲 | 240h | 168h |
| 11 | 2.1.1.1 | 园区介绍 | manual | 4d | 2015-04-10 A | 2015-04-14 A |  | 100% |  | 2015-04-10 | 2015-04-14 | 4d | 2015-04-10 | 2015-04-14 |  |  | 金学敏; 金玉哲; 李哲 | 64h | 64h |
| 12 | 2.1.1.2 | 殡葬知识 | manual | 2d | 2015-04-10 A | 2015-04-11 A |  | 100% |  | 2015-04-10 | 2015-04-11 | 2d | 2015-04-10 | 2015-04-11 |  |  | 李哲; 金玉哲 | 16h | 16h |
| 13 | 2.1.1.3 | 生活小知识 | manual | 3d | 2015-04-12 A | 2015-04-14 A | 12 | 100% |  | 2015-04-12 | 2015-04-14 | 3d | 2015-04-12 | 2015-04-14 |  |  | 李哲 | 24h | 24h |
| 14 | 2.1.1.4 | 小游戏 | manual | 2d | 2015-04-10 A | 2015-04-11 A |  | 100% |  | 2015-04-10 | 2015-04-11 | 2d | 2015-04-10 | 2015-04-11 |  |  | 李哲 | 16h | 16h |
| 15 | 2.1.2 | **旧客户** |  | 5d | 2015-04-13 A | 2015-04-18 A |  | 100% |  | 2015-04-13 | 2015-04-19 | 6d | 2015-04-13 | 2015-04-18 |  |  | 金学敏 | 96h | 96h |
| 16 | 2.1.2.1 | 园区活动通知 | manual | 1d | 2015-04-13 A | 2015-04-13 A |  | 100% |  | 2015-04-13 | 2015-04-13 | 1d | 2015-04-13 | 2015-04-13 |  |  | 金学敏 | 8h | 8h |
| 17 | 2.1.2.2 | 亲人生殁日通知 | manual | 1d | 2015-04-14 A | 2015-04-14 A |  | 100% |  | 2015-04-14 | 2015-04-14 | 1d | 2015-04-14 | 2015-04-14 |  |  | 金学敏 | 8h | 8h |
| 18 | 2.1.2.3 | 亲人数据查询 | manual | 1d | 2015-04-16 A | 2015-04-16 A |  | 100% |  | 2015-04-16 | 2015-04-16 | 1d | 2015-04-16 | 2015-04-16 |  |  | 金学敏 | 8h | 8h |
| 19 | 2.1.2.4 | 落葬仪式预约 | manual | 1d | 2015-04-17 A | 2015-04-17 A |  | 100% |  | 2015-04-17 | 2015-04-17 | 1d | 2015-04-17 | 2015-04-17 |  |  | 金学敏 | 8h | 8h |
| 20 | 2.1.2.5 | 在线活动祭品购买 | manual | 1d | 2015-04-18 A | 2015-04-18 A |  | 100% |  | 2015-04-18 | 2015-04-18 | 1d | 2015-04-18 | 2015-04-18 |  |  | 金学敏 | 8h | 8h |
| 21 | 2.1.2.6 | 代祭拜回函 | manual | 1d | 2015-04-18 A | 2015-04-18 A |  | 100% |  | 2015-04-19 | 2015-04-19 | 1d | 2015-04-18 | 2015-04-18 |  |  | 金学敏 | 8h | 8h |
| 22 | 2.1.2.7 | 服务人员资料 | manual | 1d | 2015-04-18 A | 2015-04-18 A |  | 100% |  | 2015-04-19 | 2015-04-19 | 1d | 2015-04-18 | 2015-04-18 |  |  | 金学敏 | 8h | 8h |
| 23 | 2.1.3 | **代销商** |  | 3d | 2015-04-19 A | 2015-04-21 A | 15 | 100% |  | 2015-04-20 | 2015-04-26 | 6d | 2015-04-19 | 2015-04-21 |  |  | 金学敏 | 80h | 80h |
| 24 | 2.1.3.1 | 园区活动 业务制度通知 | manual | 1d | 2015-04-19 A | 2015-04-19 A |  | 100% |  | 2015-04-20 | 2015-04-20 | 1d | 2015-04-19 | 2015-04-19 |  |  | 金学敏 | 8h | 8h |
| 25 | 2.1.3.2 | 在线保留系统 | manual | 1d | 2015-04-20 A | 2015-04-20 A |  | 100% |  | 2015-04-21 | 2015-04-21 | 1d | 2015-04-20 | 2015-04-20 |  |  | 金学敏 | 8h | 8h |
| 26 | 2.1.3.3 | 在线代订活动祭品 | manual | 1d | 2015-04-20 A | 2015-04-20 A |  | 100% |  | 2015-04-21 | 2015-04-21 | 1d | 2015-04-20 | 2015-04-20 |  |  | 金学敏 | 8h | 8h |
| 27 | 2.1.3.4 | 在线商品奖金计算 | manual | 1d | 2015-04-20 A | 2015-04-20 A |  | 100% |  | 2015-04-22 | 2015-04-22 | 1d | 2015-04-20 | 2015-04-20 |  |  | 金学敏 | 8h | 8h |
| 28 | 2.1.3.5 | 在线祭品奖金计算 | manual | 1d | 2015-04-21 A | 2015-04-21 A |  | 100% |  | 2015-04-23 | 2015-04-23 | 1d | 2015-04-21 | 2015-04-21 |  |  | 金学敏 | 8h | 8h |
| 29 | 2.1.3.6 | 落葬仪式预约 | manual | 1d | 2015-04-21 A | 2015-04-21 A |  | 100% |  | 2015-04-24 | 2015-04-24 | 1d | 2015-04-21 | 2015-04-21 |  |  | 金学敏 | 8h | 8h |
| 30 | 2.1.3.7 | 观陵山服务人员资料 | manual | 1d | 2015-04-21 A | 2015-04-21 A |  | 100% |  | 2015-04-26 | 2015-04-26 | 1d | 2015-04-21 | 2015-04-21 |  |  | 金学敏 | 8h | 8h |

| ID | WBS | Task | Type | Duration | Start | Finish | Predecessors | Complete | Remaining | Baseline start | Baseline finish | Baseline duration | Baseline 1 start | Baseline 1 finish | Total slack | Constraint | Resources | Work | Actual work |
| --- | --- | --- | --- | --- | --- | --- | --- | --- | --- | --- | --- | --- | --- | --- | --- | --- | --- | --- | --- |
| 31 | 2.1.4 | **员工** |  | 6d | 2015-04-22 A | 2015-04-28 A | 23 | 100% |  | 2015-04-27 | 2015-05-02 | 6d | 2015-04-22 | 2015-04-28 |  |  | 金学敏 | 112h | 112h |
| 32 | 2.1.4.1 | 园区活动业务制度通知 | manual | 1d | 2015-04-22 A | 2015-04-22 A |  | 100% |  | 2015-04-27 | 2015-04-27 | 1d? | 2015-04-22 | 2015-04-22 |  |  | 金学敏 | 8h | 8h |
| 33 | 2.1.4.2 | 在线保留系统 | manual | 1d | 2015-04-22 A | 2015-04-22 A |  | 100% |  | 2015-04-27 | 2015-04-27 | 1d? | 2015-04-22 | 2015-04-22 |  |  | 金学敏 | 8h | 8h |
| 34 | 2.1.4.3 | 在线陵园订购 | manual | 1d | 2015-04-22 A | 2015-04-22 A |  | 100% |  | 2015-04-27 | 2015-04-27 | 1d? | 2015-04-22 | 2015-04-22 |  |  | 金学敏 | 8h | 8h |
| 35 | 2.1.4.4 | 在线代订活动祭品 | manual | 1d | 2015-04-23 A | 2015-04-23 A |  | 100% |  | 2015-04-27 | 2015-04-27 | 1d? | 2015-04-23 | 2015-04-23 |  |  | 金学敏 | 8h | 8h |
| 36 | 2.1.4.5 | 在线商品奖金计算 | manual | 1d | 2015-04-23 A | 2015-04-23 A |  | 100% |  | 2015-04-27 | 2015-04-27 | 1d? | 2015-04-23 | 2015-04-23 |  |  | 金学敏 | 8h | 8h |
| 37 | 2.1.4.6 | 代销人员资料 | manual | 1d | 2015-04-23 A | 2015-04-23 A |  | 100% |  | 2015-04-27 | 2015-04-27 | 1d? | 2015-04-23 | 2015-04-23 |  |  | 金学敏 | 8h | 8h |
| 38 | 2.1.4.7 | 落葬仪式预约 | manual | 1d | 2015-04-24 A | 2015-04-24 A |  | 100% |  | 2015-04-27 | 2015-04-27 | 1d? | 2015-04-24 | 2015-04-24 |  |  | 金学敏 | 8h | 8h |
| 39 | 2.1.4.8 | 自有客户商品订购通知 | manual | 1d | 2015-04-24 A | 2015-04-24 A |  | 100% |  | 2015-04-27 | 2015-04-27 | 1d? | 2015-04-24 | 2015-04-24 |  |  | 金学敏 | 8h | 8h |
| 40 | 2.1.5 | **领导** |  | 1d | 2015-04-25 A | 2015-04-26 A | 31 | 100% |  | 2015-05-03 | 2015-05-09 | 7d | 2015-04-25 | 2015-04-26 |  |  | 金学敏 | 56h | 56h |
| 41 | 2.1.5.1 | 出勤内容 | manual | 1d | 2015-04-25 A | 2015-04-25 A |  | 100% |  | 2015-05-03 | 2015-05-03 | 1d? | 2015-04-25 | 2015-04-25 |  |  | 金学敏 | 8h | 8h |
| 42 | 2.1.5.2 | 每月各办事处单月业绩 | manual | 1d | 2015-04-26 A | 2015-04-26 A |  | 100% |  | 2015-05-03 | 2015-05-03 | 1d? | 2015-04-26 | 2015-04-26 |  |  | 金学敏 | 8h | 8h |
| 43 | 2.1.5.3 | 每年累进业绩 | manual | 1d | 2015-04-26 A | 2015-04-26 A |  | 100% |  | 2015-05-03 | 2015-05-03 | 1d? | 2015-04-26 | 2015-04-26 |  |  | 金学敏 | 8h | 8h |
| 44 | 2.1.5.4 | 单日业绩 | manual | 1d | 2015-04-26 A | 2015-04-26 A |  | 100% |  | 2015-05-03 | 2015-05-03 | 1d? | 2015-04-26 | 2015-04-26 |  |  | 金学敏 | 8h | 8h |
| 45 | 2.1.5.5 | 单日落葬人数 | manual | 1d | 2015-04-26 A | 2015-04-26 A |  | 100% |  | 2015-05-03 | 2015-05-03 | 1d? | 2015-04-26 | 2015-04-26 |  |  | 金学敏 | 8h | 8h |
| 46 | 2.1.5.6 | 代销人员业绩 | manual | 1d | 2015-04-26 A | 2015-04-26 A |  | 100% |  | 2015-05-03 | 2015-05-03 | 1d? | 2015-04-26 | 2015-04-26 |  |  | 金学敏 | 8h | 8h |
| 47 | 2.2 | **开发完成** |  | 1d | 2015-04-28 | 2015-04-29 | 9 |  |  | 2015-05-09 | 2015-05-10 | 1d? | 2015-04-28 | 2015-04-29 | 0d |  | 李哲 | 48h |  |
| 48 | 2.2.1 | 访客 | manual | 1d | 2015-04-28 | 2015-04-29 |  |  |  | 2015-05-09 | 2015-05-10 | 1d? | 2015-04-28 | 2015-04-29 |  |  | 李哲 | 8h |  |
| 49 | 2.2.2 | 旧客户 | manual | 1d | 2015-04-28 | 2015-04-29 |  |  |  | 2015-05-09 | 2015-05-10 | 1d? | 2015-04-28 | 2015-04-29 |  |  | 李哲 | 8h |  |
| 50 | 2.2.3 | 代销商 | manual | 1d | 2015-04-28 | 2015-04-29 |  |  |  | 2015-05-09 | 2015-05-10 | 1d? | 2015-04-28 | 2015-04-29 |  |  | 李哲 | 8h |  |
| 51 | 2.2.4 | 员工 | manual | 1d | 2015-04-28 | 2015-04-29 |  |  |  | 2015-05-09 | 2015-05-10 | 1d? | 2015-04-28 | 2015-04-29 |  |  | 李哲 | 8h |  |
| 52 | 2.2.5 | 领导 | manual | 1d | 2015-04-28 | 2015-04-29 |  |  |  | 2015-05-09 | 2015-05-10 | 1d? | 2015-04-28 | 2015-04-29 |  |  | 李哲 | 8h |  |
| 53 | 3 | **iPhone开发** |  | 36d | 2015-04-14 A | 2015-05-27 |  | 51% | 17.54d | 2015-04-14 | 2015-05-27 | 36d | 2015-04-14 | 2015-05-27 |  |  | 崔明日; 李志远; 金玉哲 | 1856h | 791.06h |
| 54 | 3.1 | **Demo开发** |  | 20d | 2015-04-16 A | 2015-05-09 |  | 59% | 8.24d | 2015-04-16 | 2015-05-16 | 26d | 2015-04-16 | 2015-05-16 | 0d |  | 崔明日; 李志远; 金玉哲 | 1008h | 791.06h |
| 55 | 3.1.1 | **访客** |  | 4d | 2015-04-16 A | 2015-04-20 A |  | 100% |  | 2015-04-16 | 2015-04-20 | 4d | 2015-04-16 | 2015-04-20 |  |  | 金玉哲; 柳哲进; 李志远; 崔明日 | 216h | 216h |
| 56 | 3.1.1.1 | 园区介绍 | manual | 2d | 2015-04-16 A | 2015-04-17 A |  | 100% |  | 2015-04-16 | 2015-04-17 | 2d | 2015-04-16 | 2015-04-17 |  |  | 柳哲进; 金玉哲; 李志远 | 48h | 48h |
| 57 | 3.1.1.2 | 殡葬知识 | manual | 1d | 2015-04-18 A | 2015-04-18 A |  | 100% |  | 2015-04-18 | 2015-04-18 | 1d | 2015-04-18 | 2015-04-18 |  |  | 金玉哲; 李志远 | 16h | 16h |
| 58 | 3.1.1.3 | 生活小知识 | manual | 2d | 2015-04-19 A | 2015-04-20 A |  | 100% |  | 2015-04-19 | 2015-04-20 | 2d | 2015-04-19 | 2015-04-20 |  | start no earlier than 2015-04-19 | 金玉哲 | 16h | 16h |
| 59 | 3.1.1.4 | 小游戏 | manual | 1d | 2015-04-20 A | 2015-04-20 A |  | 100% |  | 2015-04-20 | 2015-04-20 | 1d | 2015-04-20 | 2015-04-20 |  |  | 金玉哲 | 8h | 8h |

| ID | WBS | Task | Type | Duration | Start | Finish | Predecessors | Complete | Actual start | Baseline start | Baseline finish | Baseline duration | Baseline 1 start | Baseline 1 finish | Resources | Work | Actual work |
| --- | --- | --- | --- | --- | --- | --- | --- | --- | --- | --- | --- | --- | --- | --- | --- | --- | --- |
| 60 | 3.1.2 | **旧客户** |  | 5d | 2015-04-21 A | 2015-04-26 A | 55 | 100% |  | 2015-04-21 | 2015-04-26 | 5d | 2015-04-21 | 2015-04-26 | 金玉哲 | 96h | 96h |
| 61 | 3.1.2.1 | 园区活动通知 | manual | 1d | 2015-04-21 A | 2015-04-21 A |  | 100% |  | 2015-04-21 | 2015-04-21 | 1d | 2015-04-21 | 2015-04-21 | 金玉哲 | 8h | 8h |
| 62 | 3.1.2.2 | 亲人生殁日通知 | manual | 1d | 2015-04-22 A | 2015-04-22 A |  | 100% |  | 2015-04-22 | 2015-04-22 | 1d | 2015-04-22 | 2015-04-22 | 金玉哲 | 8h | 8h |
| 63 | 3.1.2.3 | 亲人数据查询 | manual | 1d | 2015-04-22 A | 2015-04-22 A |  | 100% |  | 2015-04-22 | 2015-04-22 | 1d | 2015-04-22 | 2015-04-22 | 金玉哲 | 8h | 8h |
| 64 | 3.1.2.4 | 落葬仪式预约 | manual | 1d | 2015-04-23 A | 2015-04-23 A |  | 100% |  | 2015-04-23 | 2015-04-23 | 1d | 2015-04-23 | 2015-04-23 | 金玉哲 | 8h | 8h |
| 65 | 3.1.2.5 | 在线活动祭品购买 | manual | 1d | 2015-04-24 A | 2015-04-24 A |  | 100% |  | 2015-04-24 | 2015-04-24 | 1d | 2015-04-24 | 2015-04-24 | 金玉哲 | 8h | 8h |
| 66 | 3.1.2.6 | 代祭拜回函 | manual | 1d | 2015-04-26 A | 2015-04-26 A |  | 100% |  | 2015-04-26 | 2015-04-26 | 1d | 2015-04-26 | 2015-04-26 | 金玉哲 | 8h | 8h |
| 67 | 3.1.2.7 | 服务人员资料 | manual | 1d | 2015-04-26 A | 2015-04-26 A |  | 100% |  | 2015-04-26 | 2015-04-26 | 1d | 2015-04-26 | 2015-04-26 | 金玉哲 | 8h | 8h |
| 68 | 3.1.3 | **代销商** |  | 7d | 2015-04-28 | 2015-05-05 A |  | 100% | 2015-04-23 | 2015-04-23 | 2015-04-30 | 7d | 2015-04-28 | 2015-05-05 | 崔明日 | 112h | 112h |
| 69 | 3.1.3.1 | 园区活动 业务制度通知 | manual | 1d | 2015-04-23 A | 2015-04-23 A |  | 100% |  | 2015-04-23 | 2015-04-23 | 1d | 2015-04-23 | 2015-04-23 | 崔明日 | 8h | 8h |
| 70 | 3.1.3.2 | 在线保留系统 | manual | 1d | 2015-04-24 A | 2015-04-24 A |  | 100% |  | 2015-04-24 | 2015-04-24 | 1d | 2015-04-24 | 2015-04-24 | 崔明日 | 8h | 8h |
| 71 | 3.1.3.3 | 在线代订活动祭品 | manual | 1d | 2015-04-26 A | 2015-04-26 A |  | 100% |  | 2015-04-26 | 2015-04-26 | 1d | 2015-04-26 | 2015-04-26 | 崔明日 | 8h | 8h |
| 72 | 3.1.3.4 | 在线商品奖金计算 | manual | 1d | 2015-04-27 A | 2015-04-27 A |  | 100% |  | 2015-04-27 | 2015-04-27 | 1d | 2015-04-27 | 2015-04-27 | 崔明日 | 8h | 8h |
| 73 | 3.1.3.5 | 在线祭品奖金计算 | manual | 1d | 2015-04-28 A | 2015-04-28 A |  | 100% |  | 2015-04-28 | 2015-04-28 | 1d | 2015-04-28 | 2015-04-28 | 崔明日 | 8h | 8h |
| 74 | 3.1.3.6 | 落葬仪式预约 | manual | 1d | 2015-04-29 A | 2015-04-29 A |  | 100% |  | 2015-04-29 | 2015-04-29 | 1d | 2015-04-29 | 2015-04-29 | 崔明日 | 8h | 8h |
| 75 | 3.1.3.7 | 观陵山服务人员资料 | manual | 1d | 2015-04-30 A | 2015-04-30 A |  | 100% |  | 2015-04-30 | 2015-04-30 | 1d | 2015-04-30 | 2015-04-30 | 崔明日 | 8h | 8h |
| 76 | 3.1.4 | **员工** |  | 6d | 2015-05-04 | 2015-05-09 | 68 |  |  | 2015-05-01 | 2015-05-09 | 8d | 2015-04-28 | 2015-05-06 | 李志远 | 48h |  |
| 77 | 3.1.4.1 | 园区活动业务制度通知 | manual | 1d? | 2015-05-04 | 2015-05-04 |  |  |  | 2015-05-01 | 2015-05-01 | 1d? | 2015-04-28 | 2015-04-28 |  |  |  |
| 78 | 3.1.4.2 | 在线保留系统 | manual | 1d? | 2015-05-04 | 2015-05-04 |  |  |  | 2015-05-01 | 2015-05-01 | 1d? | 2015-04-28 | 2015-04-28 |  |  |  |
| 79 | 3.1.4.3 | 在线陵园订购 | manual | 1d? | 2015-05-04 | 2015-05-04 |  |  |  | 2015-05-01 | 2015-05-01 | 1d? | 2015-04-28 | 2015-04-28 |  |  |  |
| 80 | 3.1.4.4 | 在线代订活动祭品 | manual | 1d? | 2015-05-04 | 2015-05-04 |  |  |  | 2015-05-01 | 2015-05-01 | 1d? | 2015-04-28 | 2015-04-28 |  |  |  |
| 81 | 3.1.4.5 | 在线商品奖金计算 | manual | 1d? | 2015-05-04 | 2015-05-04 |  |  |  | 2015-05-01 | 2015-05-01 | 1d? | 2015-04-28 | 2015-04-28 |  |  |  |
| 82 | 3.1.4.6 | 代销人员资料 | manual | 1d? | 2015-05-04 | 2015-05-04 |  |  |  | 2015-05-01 | 2015-05-01 | 1d? | 2015-04-28 | 2015-04-28 |  |  |  |
| 83 | 3.1.4.7 | 落葬仪式预约 | manual | 1d? | 2015-05-04 | 2015-05-04 |  |  |  | 2015-05-01 | 2015-05-01 | 1d? | 2015-04-28 | 2015-04-28 |  |  |  |
| 84 | 3.1.4.8 | 自有客户商品订购通知 | manual | 1d? | 2015-05-04 | 2015-05-04 |  |  |  | 2015-05-01 | 2015-05-01 | 1d? | 2015-04-28 | 2015-04-28 |  |  |  |

| ID | WBS | Task | Type | Duration | Start | Finish | Predecessors | Complete | Remaining | Baseline start | Baseline finish | Baseline duration | Baseline 1 start | Baseline 1 finish | Total slack | Resources | Work | Actual work |
| --- | --- | --- | --- | --- | --- | --- | --- | --- | --- | --- | --- | --- | --- | --- | --- | --- | --- | --- |
| 85 | 3.1.5 | **领导** |  | 7d | 2015-05-03 | 2015-05-09 | 76 |  |  | 2015-05-10 | 2015-05-16 | 7d | 2015-05-10 | 2015-05-16 |  | 崔明日 | 56h |  |
| 86 | 3.1.5.1 | 出勤内容 | manual | 1d? | 2015-05-03 | 2015-05-03 |  |  |  | 2015-05-10 | 2015-05-10 | 1d? | 2015-05-10 | 2015-05-10 |  |  |  |  |
| 87 | 3.1.5.2 | 每月各办事处单月业绩 | manual | 1d? | 2015-05-03 | 2015-05-03 |  |  |  | 2015-05-10 | 2015-05-10 | 1d? | 2015-05-10 | 2015-05-10 |  |  |  |  |
| 88 | 3.1.5.3 | 每年累进业绩 | manual | 1d? | 2015-05-03 | 2015-05-03 |  |  |  | 2015-05-10 | 2015-05-10 | 1d? | 2015-05-10 | 2015-05-10 |  |  |  |  |
| 89 | 3.1.5.4 | 单日业绩 | manual | 1d? | 2015-05-03 | 2015-05-03 |  |  |  | 2015-05-10 | 2015-05-10 | 1d? | 2015-05-10 | 2015-05-10 |  |  |  |  |
| 90 | 3.1.5.5 | 单日落葬人数 | manual | 1d? | 2015-05-03 | 2015-05-03 |  |  |  | 2015-05-10 | 2015-05-10 | 1d? | 2015-05-10 | 2015-05-10 |  |  |  |  |
| 91 | 3.1.5.6 | 代销人员业绩 | manual | 1d? | 2015-05-03 | 2015-05-03 |  |  |  | 2015-05-10 | 2015-05-10 | 1d? | 2015-05-10 | 2015-05-10 |  |  |  |  |
| 92 | 3.2 | **开发完成** |  | 1d? | 2015-05-09 | 2015-05-10 | 54 |  |  | 2015-05-16 | 2015-05-18 | 1d? | 2015-05-16 | 2015-05-18 | 6d |  |  |  |
| 93 | 3.2.1 | 访客 | manual | 1d? | 2015-05-09 | 2015-05-10 |  |  |  | 2015-05-16 | 2015-05-18 | 1d? | 2015-05-16 | 2015-05-18 |  |  |  |  |
| 94 | 3.2.2 | 旧客户 | manual | 1d? | 2015-05-09 | 2015-05-10 |  |  |  | 2015-05-16 | 2015-05-18 | 1d? | 2015-05-16 | 2015-05-18 |  |  |  |  |
| 95 | 3.2.3 | 代销商 | manual | 1d? | 2015-05-09 | 2015-05-10 |  |  |  | 2015-05-16 | 2015-05-18 | 1d? | 2015-05-16 | 2015-05-18 |  |  |  |  |
| 96 | 3.2.4 | 员工 | manual | 1d? | 2015-05-09 | 2015-05-10 |  |  |  | 2015-05-16 | 2015-05-18 | 1d? | 2015-05-16 | 2015-05-18 |  |  |  |  |
| 97 | 3.2.5 | 领导 | manual | 1d? | 2015-05-09 | 2015-05-10 |  |  |  | 2015-05-16 | 2015-05-18 | 1d? | 2015-05-16 | 2015-05-18 |  |  |  |  |
| 98 | 4 | **数据库设计** |  | 5d | 2015-04-14 A | 2015-04-19 A | 1 | 100% |  | 2015-04-14 | 2015-04-19 | 5d | 2015-04-14 | 2015-04-19 |  | 尹升日 | 112h | 112h |
| 99 | 4.1 | 用户管理 | manual | 1d | 2015-04-14 A | 2015-04-14 A |  | 100% |  | 2015-04-14 | 2015-04-14 | 1d | 2015-04-14 | 2015-04-14 |  | 尹升日 | 8h | 8h |
| 100 | 4.2 | 地图管理 | manual | 1d | 2015-04-14 A | 2015-04-14 A |  | 100% |  | 2015-04-14 | 2015-04-14 | 1d | 2015-04-14 | 2015-04-14 |  | 尹升日 | 8h | 8h |
| 101 | 4.3 | 生活知识管理 | manual | 1d | 2015-04-15 A | 2015-04-15 A |  | 100% |  | 2015-04-15 | 2015-04-15 | 1d | 2015-04-15 | 2015-04-15 |  | 尹升日 | 8h | 8h |
| 102 | 4.4 | 商品管理 | manual | 1d | 2015-04-16 A | 2015-04-16 A |  | 100% |  | 2015-04-16 | 2015-04-16 | 1d | 2015-04-16 | 2015-04-16 |  | 尹升日 | 8h | 8h |
| 103 | 4.5 | 预约管理 | manual | 1d | 2015-04-17 A | 2015-04-17 A |  | 100% |  | 2015-04-17 | 2015-04-17 | 1d | 2015-04-17 | 2015-04-17 |  | 尹升日 | 8h | 8h |
| 104 | 4.6 | 订购管理 | manual | 1d | 2015-04-18 A | 2015-04-18 A |  | 100% |  | 2015-04-18 | 2015-04-18 | 1d | 2015-04-18 | 2015-04-18 |  | 尹升日 | 8h | 8h |
| 105 | 4.7 | 通知管理 | manual | 1d | 2015-04-18 A | 2015-04-18 A |  | 100% |  | 2015-04-18 | 2015-04-18 | 1d | 2015-04-18 | 2015-04-18 |  | 尹升日 | 8h | 8h |
| 106 | 4.8 | 出勤管理 | manual | 1d | 2015-04-19 A | 2015-04-19 A |  | 100% |  | 2015-04-19 | 2015-04-19 | 1d | 2015-04-19 | 2015-04-19 |  | 尹升日 | 8h | 8h |
| 107 | 4.9 | 业绩管理 | manual | 1d | 2015-04-19 A | 2015-04-19 A |  | 100% |  | 2015-04-19 | 2015-04-19 | 1d | 2015-04-19 | 2015-04-19 |  | 尹升日 | 8h | 8h |
| 108 | 5 | **Web Service开发** |  | 1d | 2015-04-14 A | 2015-04-14 |  | 50% | 0.5d | 2015-04-14 | 2015-04-14 | 1d? | 2015-04-14 | 2015-04-14 | 0d | 尹升日; 金学敏 | 608h | 304h |
| 109 | 5.1 | **访客** |  | 1d | 2015-04-14 A | 2015-04-14 |  | 50% | 0.5d | 2015-04-14 | 2015-04-14 | 1d? | 2015-04-14 | 2015-04-14 | 0d | 尹升日; 金学敏 | 80h | 40h |
| 110 | 5.1.1 | 园区介绍 | manual | 1d | 2015-04-14 A | 2015-04-14 |  | 50% | 0.5d | 2015-04-14 | 2015-04-14 | 1d? | 2015-04-14 | 2015-04-14 |  | 尹升日; 金学敏 | 16h | 8h |
| 111 | 5.1.2 | 殡葬知识 | manual | 1d | 2015-04-14 A | 2015-04-14 |  | 50% | 0.5d | 2015-04-14 | 2015-04-14 | 1d? | 2015-04-14 | 2015-04-14 |  | 尹升日; 金学敏 | 16h | 8h |
| 112 | 5.1.3 | 生活小知识 | manual | 1d | 2015-04-14 A | 2015-04-14 |  | 50% | 0.5d | 2015-04-14 | 2015-04-14 | 1d? | 2015-04-14 | 2015-04-14 |  | 尹升日; 金学敏 | 16h | 8h |
| 113 | 5.1.4 | 小游戏 | manual | 1d | 2015-04-14 A | 2015-04-14 |  | 50% | 0.5d | 2015-04-14 | 2015-04-14 | 1d? | 2015-04-14 | 2015-04-14 |  | 尹升日; 金学敏 | 16h | 8h |

| ID | WBS | Task | Type | Duration | Start | Finish | Complete | Remaining | Baseline start | Baseline finish | Baseline duration | Baseline 1 start | Baseline 1 finish | Total slack | Resources | Work | Actual work |
| --- | --- | --- | --- | --- | --- | --- | --- | --- | --- | --- | --- | --- | --- | --- | --- | --- | --- |
| 114 | 5.2 | **旧客户** |  | 1d | 2015-04-14 A | 2015-04-14 | 50% | 0.5d | 2015-04-14 | 2015-04-14 | 1d? | 2015-04-14 | 2015-04-14 | 0d | 尹升日; 金学敏 | 128h | 64h |
| 115 | 5.2.1 | 园区活动通知 | manual | 1d | 2015-04-14 A | 2015-04-14 | 50% | 0.5d | 2015-04-14 | 2015-04-14 | 1d? | 2015-04-14 | 2015-04-14 |  | 尹升日; 金学敏 | 16h | 8h |
| 116 | 5.2.2 | 亲人生殁日通知 | manual | 1d | 2015-04-14 A | 2015-04-14 | 50% | 0.5d | 2015-04-14 | 2015-04-14 | 1d? | 2015-04-14 | 2015-04-14 |  | 尹升日; 金学敏 | 16h | 8h |
| 117 | 5.2.3 | 亲人数据查询 | manual | 1d | 2015-04-14 A | 2015-04-14 | 50% | 0.5d | 2015-04-14 | 2015-04-14 | 1d? | 2015-04-14 | 2015-04-14 |  | 尹升日; 金学敏 | 16h | 8h |
| 118 | 5.2.4 | 落葬仪式预约 | manual | 1d | 2015-04-14 A | 2015-04-14 | 50% | 0.5d | 2015-04-14 | 2015-04-14 | 1d? | 2015-04-14 | 2015-04-14 |  | 尹升日; 金学敏 | 16h | 8h |
| 119 | 5.2.5 | 在线活动祭品购买 | manual | 1d | 2015-04-14 A | 2015-04-14 | 50% | 0.5d | 2015-04-14 | 2015-04-14 | 1d? | 2015-04-14 | 2015-04-14 |  | 尹升日; 金学敏 | 16h | 8h |
| 120 | 5.2.6 | 代祭拜回函 | manual | 1d | 2015-04-14 A | 2015-04-14 | 50% | 0.5d | 2015-04-14 | 2015-04-14 | 1d? | 2015-04-14 | 2015-04-14 |  | 尹升日; 金学敏 | 16h | 8h |
| 121 | 5.2.7 | 服务人员资料 | manual | 1d | 2015-04-14 A | 2015-04-14 | 50% | 0.5d | 2015-04-14 | 2015-04-14 | 1d? | 2015-04-14 | 2015-04-14 |  | 尹升日; 金学敏 | 16h | 8h |
| 122 | 5.3 | **代销商** |  | 1d | 2015-04-14 A | 2015-04-14 | 50% | 0.5d | 2015-04-14 | 2015-04-14 | 1d? | 2015-04-14 | 2015-04-14 | 0d | 尹升日; 金学敏 | 128h | 64h |
| 123 | 5.3.1 | 园区活动 业务制度通知 | manual | 1d | 2015-04-14 A | 2015-04-14 | 50% | 0.5d | 2015-04-14 | 2015-04-14 | 1d? | 2015-04-14 | 2015-04-14 |  | 尹升日; 金学敏 | 16h | 8h |
| 124 | 5.3.2 | 在线保留系统 | manual | 1d | 2015-04-14 A | 2015-04-14 | 50% | 0.5d | 2015-04-14 | 2015-04-14 | 1d? | 2015-04-14 | 2015-04-14 |  | 尹升日; 金学敏 | 16h | 8h |
| 125 | 5.3.3 | 在线代订活动祭品 | manual | 1d | 2015-04-14 A | 2015-04-14 | 50% | 0.5d | 2015-04-14 | 2015-04-14 | 1d? | 2015-04-14 | 2015-04-14 |  | 尹升日; 金学敏 | 16h | 8h |
| 126 | 5.3.4 | 在线商品奖金计算 | manual | 1d | 2015-04-14 A | 2015-04-14 | 50% | 0.5d | 2015-04-14 | 2015-04-14 | 1d? | 2015-04-14 | 2015-04-14 |  | 尹升日; 金学敏 | 16h | 8h |
| 127 | 5.3.5 | 在线祭品奖金计算 | manual | 1d | 2015-04-14 A | 2015-04-14 | 50% | 0.5d | 2015-04-14 | 2015-04-14 | 1d? | 2015-04-14 | 2015-04-14 |  | 尹升日; 金学敏 | 16h | 8h |
| 128 | 5.3.6 | 落葬仪式预约 | manual | 1d | 2015-04-14 A | 2015-04-14 | 50% | 0.5d | 2015-04-14 | 2015-04-14 | 1d? | 2015-04-14 | 2015-04-14 |  | 尹升日; 金学敏 | 16h | 8h |
| 129 | 5.3.7 | 观陵山服务人员资料 | manual | 1d | 2015-04-14 A | 2015-04-14 | 50% | 0.5d | 2015-04-14 | 2015-04-14 | 1d? | 2015-04-14 | 2015-04-14 |  | 尹升日; 金学敏 | 16h | 8h |
| 130 | 5.4 | **员工** |  | 1d | 2015-04-14 A | 2015-04-14 | 50% | 0.5d | 2015-04-14 | 2015-04-14 | 1d? | 2015-04-14 | 2015-04-14 | 0d | 尹升日; 金学敏 | 144h | 72h |
| 131 | 5.4.1 | 园区活动业务制度通知 | manual | 1d | 2015-04-14 A | 2015-04-14 | 50% | 0.5d | 2015-04-14 | 2015-04-14 | 1d? | 2015-04-14 | 2015-04-14 |  | 尹升日; 金学敏 | 16h | 8h |
| 132 | 5.4.2 | 在线保留系统 | manual | 1d | 2015-04-14 A | 2015-04-14 | 50% | 0.5d | 2015-04-14 | 2015-04-14 | 1d? | 2015-04-14 | 2015-04-14 |  | 尹升日; 金学敏 | 16h | 8h |
| 133 | 5.4.3 | 在线陵园订购 | manual | 1d | 2015-04-14 A | 2015-04-14 | 50% | 0.5d | 2015-04-14 | 2015-04-14 | 1d? | 2015-04-14 | 2015-04-14 |  | 尹升日; 金学敏 | 16h | 8h |
| 134 | 5.4.4 | 在线代订活动祭品 | manual | 1d | 2015-04-14 A | 2015-04-14 | 50% | 0.5d | 2015-04-14 | 2015-04-14 | 1d? | 2015-04-14 | 2015-04-14 |  | 尹升日; 金学敏 | 16h | 8h |
| 135 | 5.4.5 | 在线商品奖金计算 | manual | 1d | 2015-04-14 A | 2015-04-14 | 50% | 0.5d | 2015-04-14 | 2015-04-14 | 1d? | 2015-04-14 | 2015-04-14 |  | 尹升日; 金学敏 | 16h | 8h |
| 136 | 5.4.6 | 代销人员资料 | manual | 1d | 2015-04-14 A | 2015-04-14 | 50% | 0.5d | 2015-04-14 | 2015-04-14 | 1d? | 2015-04-14 | 2015-04-14 |  | 尹升日; 金学敏 | 16h | 8h |
| 137 | 5.4.7 | 落葬仪式预约 | manual | 1d | 2015-04-14 A | 2015-04-14 | 50% | 0.5d | 2015-04-14 | 2015-04-14 | 1d? | 2015-04-14 | 2015-04-14 |  | 尹升日; 金学敏 | 16h | 8h |
| 138 | 5.4.8 | 自有客户商品订购通知 | manual | 1d | 2015-04-14 A | 2015-04-14 | 50% | 0.5d | 2015-04-14 | 2015-04-14 | 1d? | 2015-04-14 | 2015-04-14 |  | 尹升日; 金学敏 | 16h | 8h |

| ID | WBS | Task | Type | Duration | Start | Finish | Predecessors | Complete | Remaining | Baseline start | Baseline finish | Baseline duration | Baseline 1 start | Baseline 1 finish | Total slack | Resources | Work | Actual work |
| --- | --- | --- | --- | --- | --- | --- | --- | --- | --- | --- | --- | --- | --- | --- | --- | --- | --- | --- |
| 139 | 5.5 | **领导** |  | 1d | 2015-04-14 A | 2015-04-14 |  | 50% | 0.5d | 2015-04-14 | 2015-04-14 | 1d? | 2015-04-14 | 2015-04-14 | 0d | 尹升日; 金学敏 | 112h | 56h |
| 140 | 5.5.1 | 出勤内容 | manual | 1d | 2015-04-14 A | 2015-04-14 |  | 50% | 0.5d | 2015-04-14 | 2015-04-14 | 1d? | 2015-04-14 | 2015-04-14 |  | 尹升日; 金学敏 | 16h | 8h |
| 141 | 5.5.2 | 每月各办事处单月业绩 | manual | 1d | 2015-04-14 A | 2015-04-14 |  | 50% | 0.5d | 2015-04-14 | 2015-04-14 | 1d? | 2015-04-14 | 2015-04-14 |  | 尹升日; 金学敏 | 16h | 8h |
| 142 | 5.5.3 | 每年累进业绩 | manual | 1d | 2015-04-14 A | 2015-04-14 |  | 50% | 0.5d | 2015-04-14 | 2015-04-14 | 1d? | 2015-04-14 | 2015-04-14 |  | 尹升日; 金学敏 | 16h | 8h |
| 143 | 5.5.4 | 单日业绩 | manual | 1d | 2015-04-14 A | 2015-04-14 |  | 50% | 0.5d | 2015-04-14 | 2015-04-14 | 1d? | 2015-04-14 | 2015-04-14 |  | 尹升日; 金学敏 | 16h | 8h |
| 144 | 5.5.5 | 单日落葬人数 | manual | 1d | 2015-04-14 A | 2015-04-14 |  | 50% | 0.5d | 2015-04-14 | 2015-04-14 | 1d? | 2015-04-14 | 2015-04-14 |  | 尹升日; 金学敏 | 16h | 8h |
| 145 | 5.5.6 | 代销人员业绩 | manual | 1d | 2015-04-14 A | 2015-04-14 |  | 50% | 0.5d | 2015-04-14 | 2015-04-14 | 1d? | 2015-04-14 | 2015-04-14 |  | 尹升日; 金学敏 | 16h | 8h |
| 146 | 6 | **后台网站开发** |  | 35d | 2015-04-16 A | 2015-05-28 | 1 | 62% | 13.17d | 2015-04-16 | 2015-05-28 | 35d | 2015-04-16 | 2015-05-28 | 0d | 刘俊宏; 史瑞丰; 肖娜娜 | 2400h | 886.79h |
| 147 | 6.1 | **园区信息** |  | 21d | 2015-04-16 A | 2015-05-10 |  | 74% | 5.48d | 2015-04-16 | 2015-05-10 | 21d | 2015-04-16 | 2015-05-10 | 0d | 史瑞丰 | 352h | 260.17h |
| 148 | 6.1.1 | 一条龙服务（有排序功能） | manual | 3d | 2015-04-16 A | 2015-04-18 A |  | 100% |  | 2015-04-16 | 2015-04-18 | 3d | 2015-04-16 | 2015-04-18 |  | 史瑞丰 | 24h | 24h |
| 149 | 6.1.2 | 园区服务管理（落葬服务+代祭拜服务+祭品订购） | manual | 3d | 2015-04-19 | 2015-04-21 |  |  |  | 2015-04-19 | 2015-04-21 | 3d | 2015-04-19 | 2015-04-21 |  | 史瑞丰 | 24h |  |
| 150 | 6.1.3 | 园区墓地商品管理+墓地预定 | manual | 3d | 2015-04-22 | 2015-04-24 |  |  |  | 2015-04-22 | 2015-04-24 | 3d | 2015-04-22 | 2015-04-24 |  | 史瑞丰 | 24h |  |
| 151 | 6.1.4 | 园区祭拜用品管理 | manual | 2d | 2015-04-25 A | 2015-04-27 A |  | 100% |  | 2015-04-25 | 2015-04-27 | 2d | 2015-04-25 | 2015-04-27 |  | 史瑞丰 | 16h | 16h |
| 152 | 6.1.5 | 办事处管理 | manual | 3d | 2015-04-28 A | 2015-04-30 A |  | 100% |  | 2015-04-28 | 2015-04-30 | 3d | 2015-04-28 | 2015-04-30 |  | 史瑞丰 | 24h | 24h |
| 153 | 6.1.6 | 百度地图上添加办事处地址 | manual | 2d | 2015-05-01 A | 2015-05-03 A |  | 100% |  | 2015-05-01 | 2015-05-03 | 2d | 2015-05-01 | 2015-05-03 |  | 史瑞丰 | 16h | 16h |
| 154 | 6.1.7 | 园区活动通知(发布新通知推送到手机) | manual | 3d | 2015-05-04 A | 2015-05-06 A |  | 100% |  | 2015-05-04 | 2015-05-06 | 3d | 2015-05-04 | 2015-05-06 |  | 史瑞丰 | 24h | 24h |
| 155 | 6.1.8 | 园区活动（原36景） | manual | 2d | 2015-05-07 A | 2015-05-08 A |  | 100% |  | 2015-05-07 | 2015-05-08 | 2d | 2015-05-07 | 2015-05-08 |  | 史瑞丰 | 16h | 16h |
| 156 | 6.1.9 | 园区信息修改(公司简介+购墓流程+购墓注意事项+落葬习俗+殡葬新闻) | manual | 2d | 2015-05-09 A | 2015-05-10 A |  | 100% |  | 2015-05-09 | 2015-05-10 | 2d | 2015-05-09 | 2015-05-10 |  | 史瑞丰 | 16h | 16h |
| 157 | 6.2 | **预约管理** |  | 16d | 2015-04-20 A | 2015-05-07 | 164 | 91% | 1.5d | 2015-04-20 | 2015-05-07 | 16d | 2015-04-20 | 2015-05-07 | 0d | 刘俊宏 | 256h | 232h |
| 158 | 6.2.1 | 参观预约管理 | manual | 4d | 2015-04-20 A | 2015-04-23 A |  | 100% |  | 2015-04-20 | 2015-04-23 | 4d | 2015-04-20 | 2015-04-23 |  | 刘俊宏 | 32h | 32h |
| 159 | 6.2.2 | 落葬仪式预约 | manual | 3d | 2015-04-24 A | 2015-04-27 A |  | 100% |  | 2015-04-24 | 2015-04-27 | 3d | 2015-04-24 | 2015-04-27 |  | 刘俊宏 | 24h | 24h |
| 160 | 6.2.3 | 祭拜预约 | manual | 4d | 2015-04-28 A | 2015-05-01 A |  | 100% |  | 2015-04-28 | 2015-05-01 | 4d | 2015-04-28 | 2015-05-01 |  | 刘俊宏 | 32h | 32h |
| 161 | 6.2.4 | 代寄拜回函发送 | manual | 3d | 2015-05-02 A | 2015-05-04 |  | 50% | 1.5d | 2015-05-02 | 2015-05-04 | 3d | 2015-05-02 | 2015-05-04 |  | 刘俊宏 | 24h | 12h |
| 162 | 6.2.5 | 单位时间预约人数设置 | manual | 2d | 2015-05-06 A | 2015-05-07 A |  | 100% |  | 2015-05-06 | 2015-05-07 | 2d | 2015-05-06 | 2015-05-07 |  | 刘俊宏 | 16h | 16h |

| ID | WBS | Task | Type | Duration | Start | Finish | Predecessors | Complete | Remaining | Baseline start | Baseline finish | Baseline duration | Baseline 1 start | Baseline 1 finish | Total slack | Resources | Work | Actual work |
| --- | --- | --- | --- | --- | --- | --- | --- | --- | --- | --- | --- | --- | --- | --- | --- | --- | --- | --- |
| 163 | 6.3 | **系统用户管理** |  | 20d | 2015-04-16 A | 2015-05-08 |  | 23% | 15.38d | 2015-04-16 | 2015-04-29 | 12d | 2015-04-16 | 2015-05-08 | 0d | 刘俊宏 | 352h | 60.92h |
| 164 | 6.3.1 | 休假管理 | manual | 3d | 2015-04-16 A | 2015-04-19 A |  | 100% |  | 2015-04-16 | 2015-04-19 | 3d | 2015-04-16 | 2015-04-19 |  | 刘俊宏 | 24h | 24h |
| 165 | 6.3.2 | **用户管理** |  | 11d | 2015-04-27 | 2015-05-08 |  |  |  | 2015-04-20 | 2015-04-29 | 9d | 2015-04-27 | 2015-05-08 | 0d | 肖娜娜 | 168h |  |
| 166 | 6.3.2.1 | 旧客户 | manual | 2d | 2015-04-27 | 2015-04-28 |  |  |  | 2015-04-20 | 2015-04-21 | 2d | 2015-04-27 | 2015-04-28 |  | 肖娜娜 | 16h |  |
| 167 | 6.3.2.2 | 员工 | manual | 2d | 2015-04-29 | 2015-04-30 |  |  |  | 2015-04-22 | 2015-04-23 | 2d | 2015-04-29 | 2015-04-30 |  | 肖娜娜 | 16h |  |
| 168 | 6.3.2.3 | 代销商 | manual | 2d | 2015-05-03 | 2015-05-04 |  |  |  | 2015-04-24 | 2015-04-25 | 2d | 2015-05-03 | 2015-05-04 |  | 肖娜娜 | 16h |  |
| 169 | 6.3.2.4 | 领导 | manual | 2d | 2015-05-05 | 2015-05-06 |  |  |  | 2015-04-26 | 2015-04-27 | 2d | 2015-05-05 | 2015-05-06 |  | 肖娜娜 | 16h |  |
| 170 | 6.3.2.5 | 系统使用用户 | manual | 2d | 2015-05-07 | 2015-05-08 |  |  |  | 2015-04-28 | 2015-04-29 | 2d | 2015-05-07 | 2015-05-08 |  | 肖娜娜 | 16h |  |
| 171 | 6.4 | **订单管理** |  | 12d | 2015-05-08 A | 2015-05-24 | 157 | 79% | 2.54d | 2015-05-08 | 2015-05-24 | 12d | 2015-05-08 | 2015-05-24 | 0d | 刘俊宏 | 200h | 157.69h |
| 172 | 6.4.1 | 陵墓订单+导出（包含保留） | manual | 6d | 2015-05-08 A | 2015-05-14 |  | 75% | 1.5d | 2015-05-08 | 2015-05-14 | 6d | 2015-05-08 | 2015-05-14 |  | 刘俊宏 | 48h | 36h |
| 173 | 6.4.2 | 祭拜用品订单+导出 | manual | 5d | 2015-05-15 A | 2015-05-21 |  | 75% | 1.25d | 2015-05-15 | 2015-05-21 | 5d | 2015-05-15 | 2015-05-21 |  | 刘俊宏 | 40h | 30h |
| 174 | 6.4.3 | 修改订单备注 | manual | 2d | 2015-05-22 A | 2015-05-24 A |  | 100% |  | 2015-05-22 | 2015-05-24 | 2d | 2015-05-22 | 2015-05-24 |  | 刘俊宏 | 16h | 16h |
| 175 | 6.5 | **业绩管理** |  | 14d | 2015-05-11 | 2015-05-28 | 147 |  |  | 2015-05-11 | 2015-05-28 | 14d | 2015-05-11 | 2015-05-28 | 0d | 史瑞丰 | 224h |  |
| 176 | 6.5.1 | 查看员工/代销商/办事处业绩+导出 | manual | 8d | 2015-05-11 | 2015-05-20 |  |  |  | 2015-05-11 | 2015-05-20 | 8d | 2015-05-11 | 2015-05-20 |  | 史瑞丰 | 64h |  |
| 177 | 6.5.2 | 添加业绩 | manual | 3d | 2015-05-21 | 2015-05-25 |  |  |  | 2015-05-21 | 2015-05-25 | 3d | 2015-05-21 | 2015-05-25 |  | 史瑞丰 | 24h |  |
| 178 | 6.5.3 | 推送到手机 | manual | 3d | 2015-05-26 | 2015-05-28 |  |  |  | 2015-05-26 | 2015-05-28 | 3d | 2015-05-26 | 2015-05-28 |  | 史瑞丰 | 24h |  |
| 179 | 6.6 | **其他** |  | 10d | 2015-04-16 A | 2015-04-27 A |  | 100% |  | 2015-04-16 | 2015-05-05 | 17d | 2015-04-16 | 2015-04-27 |  | 肖娜娜 | 176h | 176h |
| 180 | 6.6.1 | 旅游景点管理（导航功能） | manual | 2d | 2015-04-16 A | 2015-04-17 A |  | 100% |  | 2015-04-16 | 2015-04-17 | 2d | 2015-04-16 | 2015-04-17 |  | 肖娜娜 | 16h | 16h |
| 181 | 6.6.2 | 衣食住行管理（链接地址，育为上传图片） | manual | 2d | 2015-04-18 A | 2015-04-19 A |  | 100% |  | 2015-04-18 | 2015-04-19 | 2d | 2015-04-18 | 2015-04-19 |  | 肖娜娜 | 16h | 16h |
| 182 | 6.6.3 | 游戏管理（链接地址） | manual | 1d | 2015-04-20 A | 2015-04-20 A |  | 100% |  | 2015-04-20 | 2015-04-21 | 2d | 2015-04-20 | 2015-04-20 |  | 肖娜娜 | 8h | 8h |
| 183 | 6.6.4 | 奖金计算公式调整 | manual | 1d | 2015-04-21 A | 2015-04-21 A |  | 100% |  | 2015-04-22 | 2015-04-23 | 2d | 2015-04-21 | 2015-04-21 |  | 肖娜娜 | 8h | 8h |
| 184 | 6.6.5 | 责任额度管理 | manual | 1d | 2015-04-22 A | 2015-04-22 A |  | 100% |  | 2015-04-24 | 2015-04-25 | 2d | 2015-04-22 | 2015-04-22 |  | 肖娜娜 | 8h | 8h |
| 185 | 6.6.6 | 地区管理 | manual | 1d | 2015-04-23 A | 2015-04-23 A |  | 100% |  | 2015-04-26 | 2015-04-27 | 2d | 2015-04-23 | 2015-04-23 |  | 肖娜娜 | 8h | 8h |
| 186 | 6.6.7 | 修改密码 | manual | 1d | 2015-04-24 A | 2015-04-24 A |  | 100% |  | 2015-04-28 | 2015-04-29 | 2d | 2015-04-24 | 2015-04-24 |  | 肖娜娜 | 8h | 8h |
| 187 | 6.6.8 | 墓地预留时间调整 | manual | 1d | 2015-04-25 A | 2015-04-25 A |  | 100% |  | 2015-04-30 | 2015-05-01 | 2d | 2015-04-25 | 2015-04-25 |  | 肖娜娜 | 8h | 8h |
| 188 | 6.6.9 | 落葬场次人数调整 | manual | 1d | 2015-04-26 A | 2015-04-26 A |  | 100% |  | 2015-05-02 | 2015-05-03 | 2d | 2015-04-26 | 2015-04-26 |  | 肖娜娜 | 8h | 8h |
| 189 | 6.6.10 | 定金金额与时间调整 | manual | 1d | 2015-04-27 A | 2015-04-27 A |  | 100% |  | 2015-05-04 | 2015-05-05 | 2d | 2015-04-27 | 2015-04-27 |  | 肖娜娜 | 8h | 8h |
